# new Gantte2

Schedule from MS Project, 2017-10-02 to 2017-12-28, status date 2017-11-13, 2 hours a day, A marks actual dates.
mycomputer

## Calendars

- 标准: Mon-Fri 08:00-12:00, 13:00-17:00; Sat-Sun off. Exceptions (off unless hours are given): 2017-10-15 08:00-12:00, 13:00-17:00.

## Resources

| Resource |
| --- |
| 叶港归 |
| 马思旖 |
| 周皙昊 |

## Schedule

| ID | WBS | Task | Type | Duration | Start | Finish | Predecessors | Complete | Remaining | Actual finish | Total slack | Free slack | Constraint | Deadline | Resources | Work | Actual work |
| --- | --- | --- | --- | --- | --- | --- | --- | --- | --- | --- | --- | --- | --- | --- | --- | --- | --- |
| 1 | 1 | **RPG游戏开发** |  | 262.5d | 2017-10-02 A | 2017-12-28 |  | 53% | 124.47d |  |  |  |  | 2018-01-10 |  | 1119.33h | 408.33h |
| 2 | 1.1 | **项目介绍** |  | 42.5d | 2017-10-02 A | 2017-10-13 A |  | 100% |  |  |  |  |  |  |  | 94.33h | 94.33h |
| 3 | 1.1.1 | 会议讨论 | manual | 1d | 2017-10-02 A | 2017-10-02 A |  | 100% |  |  |  |  |  |  | 马思旖; 叶港归; 周皙昊 | 6h | 6h |
| 4 | 1.1.2 | 研究项目目标 | manual | 22d | 2017-10-02 A | 2017-10-09 A |  | 100% |  |  |  |  | finish no earlier than 2017-10-06 |  | 叶港归; 马思旖; 周皙昊 | 58.33h | 58.33h |
| 5 | 1.1.3 | 项目计划调整 | manual | 1d | 2017-10-13 A | 2017-10-13 A | 4 | 100% |  |  |  |  |  |  | 马思旖; 叶港归; 周皙昊 | 6h | 6h |
| 6 | 1.1.4 | 确认项目目标 | manual | 4d | 2017-10-13 A | 2017-10-13 A | 5 | 100% |  |  |  |  | must finish on 2017-10-13 |  | 马思旖; 叶港归; 周皙昊 | 24h | 24h |
| 7 | 1.2 | **项目计划** |  | 57d | 2017-10-09 A | 2017-10-26 |  | 100% |  | 2017-10-25 |  |  |  |  |  | 118h | 118h |
| 8 | 1.2.1 | 会议讨论 | manual | 1d | 2017-10-15 A | 2017-10-15 A |  | 100% |  |  |  |  | finish no earlier than 2017-10-15 |  | 马思旖; 叶港归; 周皙昊 | 6h | 6h |
| 9 | 1.2.2 | wbs绘制 | manual | 2d | 2017-10-10 A | 2017-10-10 A |  | 100% |  |  |  |  | start no earlier than 2017-10-09 |  | 马思旖 | 4h | 4h |
| 10 | 1.2.3 | 甘特图绘制 | manual | 3d | 2017-10-09 A | 2017-10-10 A |  | 100% |  |  |  |  | finish no earlier than 2017-10-12 |  | 叶港归 | 6h | 6h |
| 11 | 1.2.4 | 项目计划书编写 | manual | 32d | 2017-10-09 A | 2017-10-17 A | 6 | 100% |  |  |  |  | must finish on 2017-10-18 |  | 叶港归 | 64h | 64h |
| 12 | 1.2.5 | 项目计划书修订 | manual | 1d? | 2017-10-18 A | 2017-10-18 A | 11 | 100% |  |  |  |  |  |  | 叶港归 | 2h | 2h |
| 13 | 1.2.6 | 项目计划ppt | manual | 24d | 2017-10-17 A | 2017-10-24 A |  | 100% |  |  |  |  | must finish on 2017-10-24 |  | 马思旖 | 24h | 24h |
| 14 | 1.2.7 | 项目计划ppt修订 | manual | 1d? | 2017-10-25 A | 2017-10-25 A | 13 | 100% |  |  |  |  |  |  | 马思旖 | 2h | 2h |
| 15 | 1.2.8 | 甘特图调整 | manual | 1d? | 2017-10-25 A | 2017-10-25 A | 10 | 100% |  |  |  |  |  |  | 叶港归 | 2h | 2h |
| 16 | 1.2.9 | 提交项目计划 | manual | 4d | 2017-10-25 A | 2017-10-25 A | 8, 9, 10, 11, 12, 13, 14, 15 | 100% |  |  |  |  | must finish on 2017-10-25 |  | 周皙昊 | 8h | 8h |
| 17 | 1.3 | **可行性分析** |  | 66.5d | 2017-10-18 A | 2017-11-08 |  | 100% |  | 2017-11-07 |  |  |  |  |  | 52h | 52h |
| 18 | 1.3.1 | 会议讨论 | manual | 1d | 2017-10-20 A | 2017-10-20 A |  | 100% |  |  |  |  | finish no earlier than 2017-10-20 |  | 马思旖; 叶港归; 周皙昊 | 6h | 6h |
| 19 | 1.3.2 | 可行性分析报告 | manual | 24d | 2017-10-18 A | 2017-10-25 A |  | 100% |  |  |  |  | start no earlier than 2017-10-18 |  | 周皙昊 | 24h | 24h |
| 20 | 1.3.3 | 可行性分析修订 | manual | 20d | 2017-10-31 A | 2017-11-06 A | 19 | 100% |  |  |  |  | finish no earlier than 2017-10-31 |  | 周皙昊 | 12h | 12h |
| 21 | 1.3.4 | 甘特图修改 | manual | 1d? | 2017-11-07 A | 2017-11-07 A | 15 | 100% |  |  |  |  |  |  | 叶港归 | 2h | 2h |
| 22 | 1.3.5 | 提交报告 | manual | 4d | 2017-11-07 A | 2017-11-07 A | 21, 18, 19, 20 | 100% |  |  |  |  | start no earlier than 2017-11-01 |  | 马思旖 | 8h | 8h |
| 23 | 1.4 | **需求分析** |  | 135.5d? | 2017-10-02 A | 2017-11-15 |  | 82% | 24.2d? |  | 124.5d |  |  |  |  | 139h | 112h |
| 25 | 1.4.1 | 会议讨论 | manual | 1d | 2017-10-26 A | 2017-10-26 A |  | 100% |  |  |  |  | finish no earlier than 2017-10-26 |  | 马思旖; 叶港归; 周皙昊 | 6h | 6h |
| 26 | 1.4.2 | 需求分析报告 | manual | 20d | 2017-11-05 A | 2017-11-10 A |  | 100% |  |  |  |  | finish no earlier than 2017-11-11 |  | 叶港归 | 24h | 24h |
| 27 | 1.4.3 | 数据字典定义 | manual | 1d? | 2017-11-13 A | 2017-11-13 A |  | 100% |  |  |  |  |  |  | 周皙昊 | 2h | 2h |
| 28 | 1.4.4 | ER图绘制 | manual | 1d? | 2017-11-13 A | 2017-11-13 A |  | 100% |  |  |  |  |  |  | 叶港归 | 2h | 2h |
| 29 | 1.4.5 | 需求分析修订 |  | 8.5d | 2017-11-10 A | 2017-11-15 | 26 |  | 8.5d |  | 124.5d | 0d | start no earlier than 2017-11-10 |  | 叶港归 | 17h | 2h |
| 30 | 1.4.6 | 界面原型设计 | manual | 20d | 2017-11-05 A | 2017-11-10 A |  | 100% |  |  |  |  | finish no earlier than 2017-11-11 |  | 马思旖 | 24h | 24h |
| 31 | 1.4.7 | 需求分析ppt | manual | 12d | 2017-11-07 A | 2017-11-10 A |  | 100% |  |  |  |  | finish no earlier than 2017-11-11 |  | 马思旖 | 24h | 24h |
| 32 | 1.4.8 | 用户代表确立 | manual | 1d? | 2017-11-13 A | 2017-11-13 A |  | 100% |  |  |  |  |  |  | 马思旖 | 2h | 2h |
| 33 | 1.4.9 | 用户代表采访 | manual | 1d? | 2017-11-13 A | 2017-11-13 A | 32 | 100% |  |  |  |  |  |  | 马思旖 | 2h | 2h |
| 34 | 1.4.10 | 界面原型修订 | manual | 0.5d? | 2017-11-13 | 2017-11-13 | 33, 30 |  |  |  |  |  |  |  | 叶港归; 周皙昊 | 2h |  |
| 35 | 1.4.11 | 需求分析ppt修订 | manual | 2d | 2017-11-13 | 2017-11-13 | 31 |  |  |  |  |  |  |  | 马思旖 | 4h |  |
| 36 | 1.4.12 | 提交需求分析 |  | 15d | 2017-11-08 A | 2017-11-15 | 29, 30, 35 | 80% | 3d |  | 124.5d |  | finish no earlier than 2017-11-11 |  | 周皙昊 | 30h | 24h |

| ID | WBS | Task | Type | Duration | Start | Finish | Predecessors | Complete | Remaining | Total slack | Constraint | Resources | Work | Actual work |
| --- | --- | --- | --- | --- | --- | --- | --- | --- | --- | --- | --- | --- | --- | --- |
| 37 | 1.5 | **项目设计** |  | 72d | 2017-11-09 A | 2017-12-04 |  | 7% | 67.03d |  |  |  | 284h | 32h |
| 38 | 1.5.1 | 人机界面设计 | manual | 40d | 2017-11-09 A | 2017-11-22 |  | 20% | 32d |  | must finish on 2017-11-22 | 马思旖; 周皙昊 | 60h | 32h |
| 39 | 1.5.2 | 结构设计 | manual | 44d | 2017-11-16 | 2017-11-30 |  |  |  |  | must finish on 2017-11-30 | 叶港归; 周皙昊 | 108h |  |
| 40 | 1.5.3 | 过程设计 | manual | 28d | 2017-11-23 | 2017-12-01 |  |  |  |  | must finish on 2017-12-01 | 马思旖; 叶港归; 周皙昊 | 108h |  |
| 41 | 1.5.4 | 提交项目设计 | manual | 4d | 2017-12-04 | 2017-12-04 |  |  |  |  | must finish on 2017-12-04 | 马思旖 | 8h |  |
| 42 | 1.6 | **项目测试** |  | 74d? | 2017-11-30 | 2017-12-27 | 37 |  |  | 0d |  |  | 418h |  |
| 43 | 1.6.1 | 编码 | manual | 37d | 2017-11-30 | 2017-12-13 |  |  |  |  | finish no earlier than 2017-12-13 | 马思旖; 叶港归; 周皙昊 | 194h |  |
| 44 | 1.6.2 | 软件测试 | manual | 37d | 2017-12-14 | 2017-12-27 | 43 |  |  |  | finish no earlier than 2017-12-19 | 马思旖; 叶港归; 周皙昊 | 222h |  |
| 45 | 1.6.3 | 提交项目测试 | manual | 1d? | 2017-12-04 | 2017-12-04 |  |  |  |  |  | 马思旖 | 2h |  |
| 46 | 1.7 | **项目验收** |  | 1d? | 2017-12-20 | 2017-12-20 | 42 |  |  |  |  |  | 6h |  |
| 47 | 1.7.1 | 验收ppt准备 | manual | 1d? | 2017-12-20 | 2017-12-20 |  |  |  |  |  | 马思旖 | 2h |  |
| 48 | 1.7.2 | app验收 | manual | 1d? | 2017-12-20 | 2017-12-20 |  |  |  |  |  | 叶港归; 周皙昊 | 4h |  |
| 49 | 1.8 | **项目总结** |  | 1d? | 2017-12-20 | 2017-12-20 | 46 |  |  |  |  |  | 8h |  |
| 50 | 1.8.1 | 项目总结文档书写 | manual | 1d? | 2017-12-20 | 2017-12-20 |  |  |  |  |  | 马思旖; 叶港归; 周皙昊 | 6h |  |
| 51 | 1.8.2 | 项目总结ppt书写 | manual | 1d? | 2017-12-20 | 2017-12-20 |  |  |  |  |  | 马思旖 | 2h |  |
